How a schedule from ProjectLibre changed from version to version. A marks actual dates.

## Version 1 (saved 2026-07-12, file Commercial construction project plan.pod)

Note of the change: Refactor project structure and update UI

| ID | WBS | Task | Duration | Start | Finish | Predecessors | Complete | Total float | Constraint |
| --- | --- | --- | --- | --- | --- | --- | --- | --- | --- |
| 1 | 1 | **Three-story Office Building (76,000 square feet)** | 344d | 2000-01-06 | 2001-05-02 |  | 1% | 236d |  |
| 2 | 1.1 | **General Conditions** | 17d | 2000-01-06 | 2000-01-29 |  | 8% | 563d |  |
| 3 |  | Receive notice to proceed and sign contract | 3d | 2000-01-06 | 2000-01-11 |  | 100% | 236d |  |
| 4 |  | Submit bond and insurance documents | 2d | 2000-01-06 | 2000-01-08 |  |  | 574d |  |
| 5 |  | Prepare and submit project schedule | 2d | 2000-01-10 | 2000-01-12 | 4 |  | 574d |  |
| 6 |  | Prepare and submit schedule of values | 2d | 2000-01-12 | 2000-01-14 | 5 |  | 574d |  |
| 7 |  | Obtain building permits | 4d | 2000-01-11 | 2000-01-15 | 3 |  | 335d |  |
| 8 |  | Submit preliminary shop drawings | 10d | 2000-01-17 | 2000-01-29 | 7 |  | 335d |  |
| 9 |  | Submit monthly requests for payment | 1d | 2000-01-06 | 2000-01-07 | 3 | 30% | 246d |  |
| 10 | 1.2 | **Long Lead Procurement** | 70d | 2000-01-07 | 2000-04-14 |  | 6% | 460d | start no earlier than 1970-01-01 |
| 11 |  | Submit shop drawings and order long lead items - steel | 10d | 2000-01-07 | 2000-01-21 | 9 |  | 246d |  |
| 12 |  | Submit shop drawings and order long lead items - roofing | 10d | 2000-01-31 | 2000-02-12 | 8 |  | 504d |  |
| 13 |  | Submit shop drawings and order long lead items - elevator | 10d | 2000-01-26 | 2000-02-09 | 8 | 100% | 497d |  |
| 14 |  | Submit shop drawings and order long lead items - plumbing | 10d | 2000-01-31 | 2000-02-12 | 8 |  | 335d |  |
| 15 |  | Submit shop drawings and order long lead items - electric | 10d | 2000-01-31 | 2000-02-12 | 8 |  | 335d |  |
| 16 |  | Submit shop drawings and order long lead items - HVAC | 10d | 2000-01-31 | 2000-02-12 | 8 |  | 335d |  |
| 17 |  | Detail, fabricate and deliver steel | 60d | 2000-01-21 | 2000-04-14 | 11 |  | 246d |  |
| 18 | 1.3 | **Mobilize on Site** | 10d | 2000-01-11 | 2000-01-25 |  |  | 236d |  |
| 19 |  | Install temporary power | 2d | 2000-01-11 | 2000-01-13 | 3 |  | 236d |  |
| 20 |  | Install temporary water service | 2d | 2000-01-11 | 2000-01-13 | 3 |  | 236d |  |
| 21 |  | Set up site office | 3d | 2000-01-13 | 2000-01-18 | 19, 20 |  | 236d |  |
| 22 |  | Set line and grade benchmarks | 3d | 2000-01-18 | 2000-01-21 | 21 |  | 236d |  |
| 23 |  | Prepare site - lay down yard and temporary fencing | 2d | 2000-01-21 | 2000-01-25 | 22 |  | 236d |  |
| 24 | 1.4 | **Site Grading and Utilities** | 35d | 2000-01-25 | 2000-03-14 |  |  | 236d |  |
| 25 |  | Clear and grub site | 3d | 2000-01-25 | 2000-01-28 | 21, 23 |  | 236d |  |
| 26 |  | Stone site access and temporary parking area | 2d | 2000-01-28 | 2000-02-01 | 25, 23 |  | 236d |  |
| 27 |  | Rough grade site (cut and fill) | 5d | 2000-02-01 | 2000-02-08 | 26 |  | 236d |  |
| 28 |  | Install storm drainage | 10d | 2000-02-08 | 2000-02-22 | 27 |  | 245d |  |
| 29 |  | Install exterior fire line and building fire riser | 10d | 2000-02-08 | 2000-02-22 | 27 |  | 236d |  |
| 30 |  | Perform final site grading | 10d | 2000-02-22 | 2000-03-07 | 28FF+1d, 29 |  | 236d |  |
| 31 |  | Erect building batter boards and layout building | 5d | 2000-03-07 | 2000-03-14 | 30 |  | 236d |  |
| 32 | 1.5 | **Foundations** | 33d | 2000-03-14 | 2000-04-28 |  |  | 440d |  |
| 33 |  | Excavate foundations | 10d | 2000-03-14 | 2000-03-28 | 31 |  | 236d |  |
| 34 |  | Excavate elevator pit | 2d | 2000-03-14 | 2000-03-16 | 31 |  | 450d |  |
| 35 |  | Form column piers and spread foundations | 4d | 2000-03-28 | 2000-04-01 | 33 |  | 236d |  |
| 36 |  | Rough-in electric and plumbing in elevator | 4d | 2000-03-16 | 2000-03-22 | 34 |  | 450d |  |
| 37 |  | テスト | 4d | 2000-03-22 | 2000-03-28 | 36 |  | 450d |  |
| 38 |  | 猫 | 4d | 2000-04-03 | 2000-04-07 | 35 |  | 236d |  |
| 39 |  | 狐と牛 | 5d | 2000-04-07 | 2000-04-14 | 38 |  | 236d |  |
| 40 |  | Pour concrete elevator walls | 1d | 2000-03-28 | 2000-03-29 | 37 |  | 450d |  |
| 41 |  | Cure elevator wall concrete | 7d | 2000-03-29 | 2000-04-07 | 40 |  | 450d |  |
| 42 |  | Cure piers and foundations | 7d | 2000-04-14 | 2000-04-25 | 39 |  | 236d |  |
| 43 |  | Strip wall forms | 1d | 2000-04-07 | 2000-04-08 | 41 |  | 450d |  |
| 44 |  | Strip column piers and foundation forms | 3d | 2000-04-25 | 2000-04-28 | 42 |  | 236d |  |
| 45 |  | Install pneumatic tube in elevator pit | 3d | 2000-04-10 | 2000-04-13 | 43 |  | 450d |  |
| 46 |  | Prepare and pour concrete floor in elevator pit | 1d | 2000-04-13 | 2000-04-14 | 45 |  | 450d |  |
| 47 | 1.6 | **Steel Erection** | 45d | 2000-04-28 | 2000-06-30 |  |  | 375d |  |
| 48 |  | Erect steel columns, beams and joist - 1st and 2nd floors | 10d | 2000-04-28 | 2000-05-12 | 44, 17 |  | 236d |  |
| 49 |  | Erect steel columns, beams and joist - 3rd floor and roof | 10d | 2000-05-12 | 2000-05-26 | 48 |  | 236d |  |
| 50 |  | Install miscellaneous iron and bracing - 1st and 2nd floors | 10d | 2000-05-12 | 2000-05-26 | 48 |  | 400d |  |
| 51 |  | Install miscellaneous iron and bracing - 3rd floor and roof | 10d | 2000-05-26 | 2000-06-09 | 49 |  | 236d |  |
| 52 |  | Install stairs and miscellaneous iron railing | 10d | 2000-06-09 | 2000-06-23 | 51 |  | 236d |  |
| 53 |  | Touch-up paint on steel | 5d | 2000-06-23 | 2000-06-30 | 52 |  | 236d |  |
| 54 | 1.7 | **Form and Pour Concrete - Floors and Roof** | 85d | 2000-05-12 | 2000-09-08 |  |  | 321d |  |
| 55 |  | Form 2nd floor including all floor openings | 5d | 2000-06-30 | 2000-07-07 | 53, 14, 15, 16, 48 |  | 236d |  |
| 56 |  | Install rebar and in-floor utilities (including mechanical, electrical, plumbing) | 5d | 2000-05-12 | 2000-05-19 | 48 |  | 271d |  |
| 57 |  | Pour 2nd floor slab | 4d | 2000-07-07 | 2000-07-13 | 56, 55 |  | 236d |  |
| 58 |  | Cure 2nd floor slab | 7d | 2000-07-13 | 2000-07-22 | 57 |  | 236d |  |
| 59 |  | Strip forms from 2nd floor slab | 2d | 2000-07-24 | 2000-07-26 | 58 |  | 335d |  |
| 60 |  | Form 3rd floor including all floor openings | 5d | 2000-07-24 | 2000-07-29 | 58 |  | 236d |  |
| 61 |  | Install rebar and in-floor utilities (including mechanical, electrical, plumbing) | 5d | 2000-07-24 | 2000-07-29 | 58 |  | 236d |  |
| 62 |  | Pour 3rd floor slab | 4d | 2000-07-31 | 2000-08-04 | 61, 60 |  | 236d |  |
| 63 |  | Cure 3rd floor slab | 7d | 2000-08-04 | 2000-08-15 | 62 |  | 236d |  |
| 64 |  | Strip forms from 3rd floor slab | 2d | 2000-08-15 | 2000-08-17 | 63 |  | 252d |  |
| 65 |  | Form roof slab including all floor openings | 5d | 2000-08-15 | 2000-08-22 | 63 |  | 236d |  |
| 66 |  | Install rebar and in-floor utilities (including mechanical, electrical, plumbing) | 5d | 2000-08-15 | 2000-08-22 | 63 |  | 236d |  |
| 67 |  | Pour roof slab | 4d | 2000-08-22 | 2000-08-26 | 66, 65 |  | 236d |  |
| 68 |  | Cure roof slab | 7d | 2000-08-28 | 2000-09-06 | 67 |  | 236d |  |
| 69 |  | Strip forms from roof slab | 2d | 2000-09-06 | 2000-09-08 | 68 |  | 236d |  |
| 70 |  | Form 1st floor | 4d | 2000-07-26 | 2000-08-01 | 59 |  | 336d |  |

| ID | WBS | Task | Duration | Start | Finish | Predecessors | Total float |
| --- | --- | --- | --- | --- | --- | --- | --- |
| 71 |  | Install electrical underground | 5d | 2000-07-26 | 2000-08-02 | 59 | 335d |
| 72 |  | Install plumbing underground | 5d | 2000-07-26 | 2000-08-02 | 59 | 335d |
| 73 |  | Install rebar and in-floor utilities | 4d | 2000-07-26 | 2000-08-01 | 59 | 336d |
| 74 |  | Pour 1st floor slab | 4d | 2000-08-02 | 2000-08-08 | 70, 73, 71, 72 | 335d |
| 75 |  | Cure 1st floor slab | 7d | 2000-08-08 | 2000-08-17 | 74 | 335d |
| 76 |  | Strip forms from 1st floor slab | 2d | 2000-08-17 | 2000-08-19 | 75 | 335d |
| 77 | 1.8 | **Carpentry Work** | 15d | 2000-09-08 | 2000-09-29 |  | 236d |
| 78 |  | Install exterior sheathing and metal studs | 15d | 2000-09-08 | 2000-09-29 | 64, 69 | 236d |
| 79 | 1.9 | **Masonry Work** | 110d | 2000-06-09 | 2000-11-10 |  | 316d |
| 80 |  | Rough-in plumbing at toilets and masonry walls | 20d | 2000-08-21 | 2000-09-16 | 76, 14 | 335d |
| 81 |  | Lay masonry at core, mechanical, and toilets | 20d | 2000-06-09 | 2000-07-07 | 50, 51 | 390d |
| 82 |  | Install exterior masonry work | 25d | 2000-09-29 | 2000-11-03 | 78 | 236d |
| 83 |  | Install roof drains | 2d | 2000-11-03 | 2000-11-07 | 82 | 313d |
| 84 |  | Install tile in toilet rooms | 10d | 2000-09-18 | 2000-09-30 | 80 | 335d |
| 85 |  | Clean masonry | 5d | 2000-11-03 | 2000-11-10 | 82 | 316d |
| 86 |  | Clean toilet room tile | 5d | 2000-10-02 | 2000-10-07 | 84 | 335d |
| 87 | 1.10 | **Roofing** | 31d | 2000-11-03 | 2000-12-16 |  | 311d |
| 88 |  | Install flashing at parapet walls | 4d | 2000-11-03 | 2000-11-09 | 82 | 311d |
| 89 |  | Pour lightweight concrete roof fill | 2d | 2000-11-09 | 2000-11-11 | 12, 83, 88 | 311d |
| 90 |  | Install seamless roofing material | 5d | 2000-11-18 | 2000-11-25 | 89FS+5d | 311d |
| 91 |  | Spread stone ballast on seamless roof | 5d | 2000-11-27 | 2000-12-02 | 90 | 311d |
| 92 |  | Set rooftop equipment | 10d | 2000-12-04 | 2000-12-16 | 91 | 311d |
| 93 | 1.11 | **Window wall and store front closures** | 60d | 2000-11-03 | 2001-01-26 |  | 241d |
| 94 |  | Install window wall aluminum and glass | 25d | 2000-11-03 | 2000-12-08 | 82 | 236d |
| 95 |  | Install interior stud walls and drywall | 25d | 2000-12-08 | 2001-01-12 | 94 | 236d |
| 96 |  | Install interior doors and hardware | 10d | 2001-01-12 | 2001-01-26 | 95 | 241d |
| 97 |  | Install store front doors and hardware | 15d | 2000-11-03 | 2000-11-24 | 82 | 271d |
| 98 | 1.12 | **Building Finishes** | 80d | 2000-12-08 | 2001-03-30 |  | 243d |
| 99 |  | Install millwork and wood trim | 15d | 2001-01-12 | 2001-02-02 | 97, 95 | 236d |
| 100 |  | Paint walls and woodwork | 20d | 2001-02-02 | 2001-03-02 | 99, 96 | 236d |
| 101 |  | Install conduit at ceiling plenum space | 15d | 2000-12-08 | 2000-12-29 | 94 | 261d |
| 102 |  | Install duct in ceiling plenum space | 15d | 2001-01-12 | 2001-02-02 | 95, 101 | 256d |
| 103 |  | Install ceiling grid | 10d | 2001-02-02 | 2001-02-16 | 95, 102 | 256d |
| 104 |  | Install ceiling tile | 10d | 2001-02-16 | 2001-03-02 | 103 | 256d |
| 105 |  | Hang wallpaper | 10d | 2001-02-16 | 2001-03-02 | 103 | 256d |
| 106 |  | Install building carpet | 20d | 2001-03-02 | 2001-03-30 | 100 | 236d |
| 107 |  | Install hardware and accessories | 15d | 2001-03-02 | 2001-03-23 | 100 | 241d |
| 108 |  | Complete interior and exterior sod and plantings | 10d | 2001-03-02 | 2001-03-16 | 100 | 243d |
| 109 |  | Pave, curb, and stripe parking lot | 10d | 2001-03-16 | 2001-03-30 | 108 | 243d |
| 110 | 1.13 | **Elevators** | 40d | 2000-07-07 | 2000-09-01 |  | 390d |
| 111 |  | Set elevator equipment in shafts | 20d | 2000-07-07 | 2000-08-04 | 81, 46, 13 | 390d |
| 112 |  | Set equipment in mechanical room | 10d | 2000-08-04 | 2000-08-18 | 111 | 390d |
| 113 |  | Test and align doors and equipment | 10d | 2000-08-18 | 2000-09-01 | 112 | 390d |
| 114 | 1.14 | **Plumbing** | 90d | 2000-11-10 | 2001-03-16 |  | 246d |
| 115 |  | Rough-in plumbing in drywall walls | 20d | 2000-12-08 | 2001-01-05 | 94 | 271d |
| 116 |  | Tie-in fire line riser and set valves | 10d | 2000-11-10 | 2000-11-24 | 85 | 316d |
| 117 |  | Set plumbing fixtures and trim | 15d | 2001-01-05 | 2001-01-26 | 86, 115, 80 | 271d |
| 118 |  | Flush, test, and clean piping and fixtures | 10d | 2001-03-02 | 2001-03-16 | 100, 116, 117 | 246d |
| 119 | 1.15 | **Electrical** | 139d | 2000-08-21 | 2001-03-02 |  | 259d |
| 120 |  | Rough-in electrical in masonry walls | 20d | 2000-08-21 | 2000-09-16 | 76, 15 | 335d |
| 121 |  | Rough-in electrical in drywall walls | 20d | 2000-12-08 | 2001-01-05 | 94 | 271d |
| 122 |  | Pull wire in conduit and set area transformers | 15d | 2000-12-29 | 2001-01-19 | 120, 101 | 261d |
| 123 |  | Install and terminate electrical devices | 15d | 2001-01-19 | 2001-02-09 | 122, 121 | 261d |
| 124 |  | Make electrical terminations for HVAC equipment | 2d | 2001-01-19 | 2001-01-23 | 122, 92 | 287d |
| 125 |  | Install light fixtures - test and clean | 10d | 2001-02-16 | 2001-03-02 | 103, 123 | 256d |
| 126 | 1.16 | **Heating and Ventilating - AC** | 180d | 2000-07-07 | 2001-03-16 |  | 269d |
| 127 |  | Set equipment in mechanical room | 10d | 2000-07-07 | 2000-07-21 | 81, 16 | 404d |
| 128 |  | Rough-in mechanical in masonry walls | 20d | 2000-08-21 | 2000-09-16 | 76 | 363d |
| 129 |  | Rough-in mechanical in drywall walls | 10d | 2000-12-08 | 2000-12-22 | 94 | 329d |
| 130 |  | Install duct in building chase | 15d | 2000-12-08 | 2000-12-29 | 127, 128, 94 | 304d |
| 131 |  | Set HVAC trim and test and balance system | 20d | 2001-02-16 | 2001-03-16 | 103, 130, 124 | 269d |
| 132 | 1.17 | **Final Clean-up and Occupancy** | 60d | 2001-01-12 | 2001-04-06 |  | 254d |
| 133 |  | Install hard tile flooring in common areas | 5d | 2001-01-12 | 2001-01-19 | 95 | 282d |
| 134 |  | Clean hard tile floors | 4d | 2001-01-19 | 2001-01-25 | 133 | 282d |
| 135 |  | Remove debris from building and do final clean-up | 4d | 2001-03-30 | 2001-04-05 | 106, 105, 107, 108, 118, 125, 104, 134 | 236d |
| 136 |  | Substantial completion date | 1d | 2001-04-05 | 2001-04-06 | 135 | 254d |
| 137 | 1.18 | **Complete Final Inspections** | 6d | 2001-04-05 | 2001-04-13 |  | 236d |
| 138 |  | Complete elevator inspection and certification | 3d | 2001-04-05 | 2001-04-10 | 135, 113 | 236d |
| 139 |  | Perform architect's inspection | 1d | 2001-04-10 | 2001-04-11 | 135, 109, 138 | 236d |
| 140 |  | Perform local building agency inspection | 1d | 2001-04-11 | 2001-04-12 | 139 | 236d |

| ID | Task | Duration | Start | Finish | Predecessors | Total float |
| --- | --- | --- | --- | --- | --- | --- |
| 141 | Perform Fire Marshal's inspection | 1d | 2001-04-12 | 2001-04-13 | 140 | 236d |
| 142 | Complete punch list items from all inspections | 10d | 2001-04-13 | 2001-04-27 | 141 | 236d |
| 143 | Obtain certificate of occupancy | 2d | 2001-04-27 | 2001-05-01 | 142 | 236d |
| 144 | Issue final completion documents including warranties | 1d | 2001-04-27 | 2001-04-28 | 142 | 237d |
| 145 | Issue final request for payment | 1d | 2001-05-01 | 2001-05-02 | 143, 144 | 236d |

## Version 2 (saved 2026-07-12, file Commercial construction project plan_tmp0.xml)

Note of the change: Refactor project structure and update UI

Last finish 2001-05-02 → 2001-04-26 (-6d). Complete tasks 2 → 0.

Changed:

| ID | Task | Start | Finish | Complete | Total float | Predecessors | Other |
| --- | --- | --- | --- | --- | --- | --- | --- |
| 1 | **Three-story Office Building (76,000 square feet)** | 2000-01-06 → 2000-01-03 (-3d) | 2001-05-02 → 2001-04-26 (-6d) | 1% → 0% | 236d → none |  | resources 未割り当て → none |
| 2 | **General Conditions** | 2000-01-06 → 2000-01-03 (-3d) | 2000-01-29 → 2000-01-25 (-4d) | 8% → 0% | 563d → none |  | resources 未割り当て → none |
| 3 | Receive notice to proceed and sign contract | 2000-01-06 → 2000-01-03 (-3d) | 2000-01-11 → 2000-01-05 (-6d) | 100% → 0% | 236d → none |  |  |
| 4 | Submit bond and insurance documents |  | 2000-01-08 → 2000-01-07 (-1d) |  | 574d → none | none → 3 |  |
| 5 | Prepare and submit project schedule |  | 2000-01-12 → 2000-01-11 (-1d) |  | 574d → none |  |  |
| 6 | Prepare and submit schedule of values |  | 2000-01-14 → 2000-01-13 (-1d) |  | 574d → none |  |  |
| 7 | Obtain building permits | 2000-01-11 → 2000-01-06 (-5d) | 2000-01-15 → 2000-01-11 (-4d) |  | 335d → none |  |  |
| 8 | Submit preliminary shop drawings | 2000-01-17 → 2000-01-12 (-5d) | 2000-01-29 → 2000-01-25 (-4d) |  | 335d → none |  |  |
| 9 | Submit monthly requests for payment |  | 2000-01-07 → 2000-01-06 (-1d) | 30% → 0% | 246d → none |  | resources 未割り当て → none |
| 10 | **Long Lead Procurement** |  | 2000-04-14 → 2000-04-13 (-1d) | 6% → 0% | 460d → none |  | constraint start no earlier than 1970-01-01 → none; resources 未割り当て → none |
| 11 | Submit shop drawings and order long lead items - steel |  | 2000-01-21 → 2000-01-20 (-1d) |  | 246d → none |  |  |
| 12 | Submit shop drawings and order long lead items - roofing | 2000-01-31 → 2000-01-26 (-5d) | 2000-02-12 → 2000-02-08 (-4d) |  | 504d → none |  |  |
| 13 | Submit shop drawings and order long lead items - elevator |  | 2000-02-09 → 2000-02-08 (-1d) | 100% → 0% | 497d → none |  |  |
| 14 | Submit shop drawings and order long lead items - plumbing | 2000-01-31 → 2000-01-26 (-5d) | 2000-02-12 → 2000-02-08 (-4d) |  | 335d → none |  |  |
| 15 | Submit shop drawings and order long lead items - electric | 2000-01-31 → 2000-01-26 (-5d) | 2000-02-12 → 2000-02-08 (-4d) |  | 335d → none |  |  |
| 16 | Submit shop drawings and order long lead items - HVAC | 2000-01-31 → 2000-01-26 (-5d) | 2000-02-12 → 2000-02-08 (-4d) |  | 335d → none |  |  |
| 17 | Detail, fabricate and deliver steel |  | 2000-04-14 → 2000-04-13 (-1d) |  | 246d → none |  |  |
| 18 | **Mobilize on Site** | 2000-01-11 → 2000-01-06 (-5d) | 2000-01-25 → 2000-01-19 (-6d) |  | 236d → none |  | resources 未割り当て → none |
| 19 | Install temporary power | 2000-01-11 → 2000-01-06 (-5d) | 2000-01-13 → 2000-01-07 (-6d) |  | 236d → none |  |  |
| 20 | Install temporary water service | 2000-01-11 → 2000-01-06 (-5d) | 2000-01-13 → 2000-01-07 (-6d) |  | 236d → none |  |  |
| 21 | Set up site office | 2000-01-13 → 2000-01-10 (-3d) | 2000-01-18 → 2000-01-12 (-6d) |  | 236d → none |  |  |
| 22 | Set line and grade benchmarks | 2000-01-18 → 2000-01-13 (-5d) | 2000-01-21 → 2000-01-17 (-4d) |  | 236d → none |  |  |
| 23 | Prepare site - lay down yard and temporary fencing | 2000-01-21 → 2000-01-18 (-3d) | 2000-01-25 → 2000-01-19 (-6d) |  | 236d → none |  |  |
| 24 | **Site Grading and Utilities** | 2000-01-25 → 2000-01-20 (-5d) | 2000-03-14 → 2000-03-08 (-6d) |  | 236d → none |  | resources 未割り当て → none |
| 25 | Clear and grub site | 2000-01-25 → 2000-01-20 (-5d) | 2000-01-28 → 2000-01-24 (-4d) |  | 236d → none |  |  |
| 26 | Stone site access and temporary parking area | 2000-01-28 → 2000-01-25 (-3d) | 2000-02-01 → 2000-01-26 (-6d) |  | 236d → none |  |  |
| 27 | Rough grade site (cut and fill) | 2000-02-01 → 2000-01-27 (-5d) | 2000-02-08 → 2000-02-02 (-6d) |  | 236d → none |  |  |
| 28 | Install storm drainage | 2000-02-08 → 2000-02-03 (-5d) | 2000-02-22 → 2000-02-16 (-6d) |  | 245d → none |  |  |
| 29 | Install exterior fire line and building fire riser | 2000-02-08 → 2000-02-03 (-5d) | 2000-02-22 → 2000-02-16 (-6d) |  | 236d → none |  |  |
| 30 | Perform final site grading | 2000-02-22 → 2000-02-17 (-5d) | 2000-03-07 → 2000-03-01 (-6d) |  | 236d → none |  |  |
| 31 | Erect building batter boards and layout building | 2000-03-07 → 2000-03-02 (-5d) | 2000-03-14 → 2000-03-08 (-6d) |  | 236d → none |  |  |
| 32 | **Foundations** | 2000-03-14 → 2000-03-09 (-5d) | 2000-04-28 → 2000-04-24 (-4d) |  | 440d → none |  | resources 未割り当て → none |
| 33 | Excavate foundations | 2000-03-14 → 2000-03-09 (-5d) | 2000-03-28 → 2000-03-22 (-6d) |  | 236d → none |  |  |
| 34 | Excavate elevator pit | 2000-03-14 → 2000-03-09 (-5d) | 2000-03-16 → 2000-03-10 (-6d) |  | 450d → none |  |  |
| 35 | Form column piers and spread foundations | 2000-03-28 → 2000-03-23 (-5d) | 2000-04-01 → 2000-03-28 (-4d) |  | 236d → none |  |  |
| 36 | Rough-in electric and plumbing in elevator | 2000-03-16 → 2000-03-13 (-3d) | 2000-03-22 → 2000-03-16 (-6d) |  | 450d → none |  |  |
| 37 | Form elevator pit walls | 2000-03-22 → 2000-03-17 (-5d) | 2000-03-28 → 2000-03-22 (-6d) |  | 450d → none |  | was named テスト |
| 38 | Set reinforcing and anchor bolts | 2000-04-03 → 2000-03-29 (-5d) | 2000-04-07 → 2000-04-03 (-4d) |  | 236d → none |  | was named 猫 |
| 39 | Pour column piers and foundations | 2000-04-07 → 2000-04-04 (-3d) | 2000-04-14 → 2000-04-10 (-4d) |  | 236d → none |  | was named 狐と牛 |
| 40 | Pour concrete elevator walls | 2000-03-28 → 2000-03-23 (-5d) | 2000-03-29 → 2000-03-23 (-6d) |  | 450d → none |  |  |
| 41 | Cure elevator wall concrete | 2000-03-29 → 2000-03-24 (-5d) | 2000-04-07 → 2000-04-03 (-4d) |  | 450d → none |  |  |
| 42 | Cure piers and foundations | 2000-04-14 → 2000-04-11 (-3d) | 2000-04-25 → 2000-04-19 (-6d) |  | 236d → none |  |  |
| 43 | Strip wall forms | 2000-04-07 → 2000-04-04 (-3d) | 2000-04-08 → 2000-04-04 (-4d) |  | 450d → none |  |  |
| 44 | Strip column piers and foundation forms | 2000-04-25 → 2000-04-20 (-5d) | 2000-04-28 → 2000-04-24 (-4d) |  | 236d → none |  |  |
| 45 | Install pneumatic tube in elevator pit | 2000-04-10 → 2000-04-05 (-5d) | 2000-04-13 → 2000-04-07 (-6d) |  | 450d → none |  |  |
| 46 | Prepare and pour concrete floor in elevator pit | 2000-04-13 → 2000-04-10 (-3d) | 2000-04-14 → 2000-04-10 (-4d) |  | 450d → none |  |  |
| 47 | **Steel Erection** | 2000-04-28 → 2000-04-25 (-3d) | 2000-06-30 → 2000-06-26 (-4d) |  | 375d → none |  | resources 未割り当て → none |
| 48 | Erect steel columns, beams and joist - 1st and 2nd floors | 2000-04-28 → 2000-04-25 (-3d) | 2000-05-12 → 2000-05-08 (-4d) |  | 236d → none |  |  |
| 49 | Erect steel columns, beams and joist - 3rd floor and roof | 2000-05-12 → 2000-05-09 (-3d) | 2000-05-26 → 2000-05-22 (-4d) |  | 236d → none |  |  |
| 50 | Install miscellaneous iron and bracing - 1st and 2nd floors | 2000-05-12 → 2000-05-09 (-3d) | 2000-05-26 → 2000-05-22 (-4d) |  | 400d → none |  |  |
| 51 | Install miscellaneous iron and bracing - 3rd floor and roof | 2000-05-26 → 2000-05-23 (-3d) | 2000-06-09 → 2000-06-05 (-4d) |  | 236d → none |  |  |
| 52 | Install stairs and miscellaneous iron railing | 2000-06-09 → 2000-06-06 (-3d) | 2000-06-23 → 2000-06-19 (-4d) |  | 236d → none |  |  |
| 53 | Touch-up paint on steel | 2000-06-23 → 2000-06-20 (-3d) | 2000-06-30 → 2000-06-26 (-4d) |  | 236d → none |  |  |
| 54 | **Form and Pour Concrete - Floors and Roof** | 2000-05-12 → 2000-05-09 (-3d) | 2000-09-08 → 2000-09-04 (-4d) |  | 321d → none |  | resources 未割り当て → none |
| 55 | Form 2nd floor including all floor openings | 2000-06-30 → 2000-06-27 (-3d) | 2000-07-07 → 2000-07-03 (-4d) |  | 236d → none |  |  |
| 56 | Install rebar and in-floor utilities (including mechanical, electrical, plumbing) | 2000-05-12 → 2000-05-09 (-3d) | 2000-05-19 → 2000-05-15 (-4d) |  | 271d → none |  |  |
| 57 | Pour 2nd floor slab | 2000-07-07 → 2000-07-04 (-3d) | 2000-07-13 → 2000-07-07 (-6d) |  | 236d → none |  |  |
| 58 | Cure 2nd floor slab | 2000-07-13 → 2000-07-10 (-3d) | 2000-07-22 → 2000-07-18 (-4d) |  | 236d → none |  |  |
| 59 | Strip forms from 2nd floor slab | 2000-07-24 → 2000-07-19 (-5d) | 2000-07-26 → 2000-07-20 (-6d) |  | 335d → none |  |  |
| 60 | Form 3rd floor including all floor openings | 2000-07-24 → 2000-07-19 (-5d) | 2000-07-29 → 2000-07-25 (-4d) |  | 236d → none |  |  |
| 61 | Install rebar and in-floor utilities (including mechanical, electrical, plumbing) | 2000-07-24 → 2000-07-19 (-5d) | 2000-07-29 → 2000-07-25 (-4d) |  | 236d → none |  |  |
| 62 | Pour 3rd floor slab | 2000-07-31 → 2000-07-26 (-5d) | 2000-08-04 → 2000-07-31 (-4d) |  | 236d → none |  |  |
| 63 | Cure 3rd floor slab | 2000-08-04 → 2000-08-01 (-3d) | 2000-08-15 → 2000-08-09 (-6d) |  | 236d → none |  |  |
| 64 | Strip forms from 3rd floor slab | 2000-08-15 → 2000-08-10 (-5d) | 2000-08-17 → 2000-08-11 (-6d) |  | 252d → none |  |  |
| 65 | Form roof slab including all floor openings | 2000-08-15 → 2000-08-10 (-5d) | 2000-08-22 → 2000-08-16 (-6d) |  | 236d → none |  |  |
| 66 | Install rebar and in-floor utilities (including mechanical, electrical, plumbing) | 2000-08-15 → 2000-08-10 (-5d) | 2000-08-22 → 2000-08-16 (-6d) |  | 236d → none |  |  |
| 67 | Pour roof slab | 2000-08-22 → 2000-08-17 (-5d) | 2000-08-26 → 2000-08-22 (-4d) |  | 236d → none |  |  |
| 68 | Cure roof slab | 2000-08-28 → 2000-08-23 (-5d) | 2000-09-06 → 2000-08-31 (-6d) |  | 236d → none |  |  |
| 69 | Strip forms from roof slab | 2000-09-06 → 2000-09-01 (-5d) | 2000-09-08 → 2000-09-04 (-4d) |  | 236d → none |  |  |
| 70 | Form 1st floor | 2000-07-26 → 2000-07-21 (-5d) | 2000-08-01 → 2000-07-26 (-6d) |  | 336d → none |  |  |

| ID | Task | Start | Finish | Total float | Other |
| --- | --- | --- | --- | --- | --- |
| 71 | Install electrical underground | 2000-07-26 → 2000-07-21 (-5d) | 2000-08-02 → 2000-07-27 (-6d) | 335d → none |  |
| 72 | Install plumbing underground | 2000-07-26 → 2000-07-21 (-5d) | 2000-08-02 → 2000-07-27 (-6d) | 335d → none |  |
| 73 | Install rebar and in-floor utilities | 2000-07-26 → 2000-07-21 (-5d) | 2000-08-01 → 2000-07-26 (-6d) | 336d → none |  |
| 74 | Pour 1st floor slab | 2000-08-02 → 2000-07-28 (-5d) | 2000-08-08 → 2000-08-02 (-6d) | 335d → none |  |
| 75 | Cure 1st floor slab | 2000-08-08 → 2000-08-03 (-5d) | 2000-08-17 → 2000-08-11 (-6d) | 335d → none |  |
| 76 | Strip forms from 1st floor slab | 2000-08-17 → 2000-08-14 (-3d) | 2000-08-19 → 2000-08-15 (-4d) | 335d → none |  |
| 77 | **Carpentry Work** | 2000-09-08 → 2000-09-05 (-3d) | 2000-09-29 → 2000-09-25 (-4d) | 236d → none | resources 未割り当て → none |
| 78 | Install exterior sheathing and metal studs | 2000-09-08 → 2000-09-05 (-3d) | 2000-09-29 → 2000-09-25 (-4d) | 236d → none |  |
| 79 | **Masonry Work** | 2000-06-09 → 2000-06-06 (-3d) | 2000-11-10 → 2000-11-06 (-4d) | 316d → none | resources 未割り当て → none |
| 80 | Rough-in plumbing at toilets and masonry walls | 2000-08-21 → 2000-08-16 (-5d) | 2000-09-16 → 2000-09-12 (-4d) | 335d → none |  |
| 81 | Lay masonry at core, mechanical, and toilets | 2000-06-09 → 2000-06-06 (-3d) | 2000-07-07 → 2000-07-03 (-4d) | 390d → none |  |
| 82 | Install exterior masonry work | 2000-09-29 → 2000-09-26 (-3d) | 2000-11-03 → 2000-10-30 (-4d) | 236d → none |  |
| 83 | Install roof drains | 2000-11-03 → 2000-10-31 (-3d) | 2000-11-07 → 2000-11-01 (-6d) | 313d → none |  |
| 84 | Install tile in toilet rooms | 2000-09-18 → 2000-09-13 (-5d) | 2000-09-30 → 2000-09-26 (-4d) | 335d → none |  |
| 85 | Clean masonry | 2000-11-03 → 2000-10-31 (-3d) | 2000-11-10 → 2000-11-06 (-4d) | 316d → none |  |
| 86 | Clean toilet room tile | 2000-10-02 → 2000-09-27 (-5d) | 2000-10-07 → 2000-10-03 (-4d) | 335d → none |  |
| 87 | **Roofing** | 2000-11-03 → 2000-10-31 (-3d) | 2000-12-16 → 2000-12-12 (-4d) | 311d → none | resources 未割り当て → none |
| 88 | Install flashing at parapet walls | 2000-11-03 → 2000-10-31 (-3d) | 2000-11-09 → 2000-11-03 (-6d) | 311d → none |  |
| 89 | Pour lightweight concrete roof fill | 2000-11-09 → 2000-11-06 (-3d) | 2000-11-11 → 2000-11-07 (-4d) | 311d → none |  |
| 90 | Install seamless roofing material | 2000-11-18 → 2000-11-15 (-3d) | 2000-11-25 → 2000-11-21 (-4d) | 311d → none |  |
| 91 | Spread stone ballast on seamless roof | 2000-11-27 → 2000-11-22 (-5d) | 2000-12-02 → 2000-11-28 (-4d) | 311d → none |  |
| 92 | Set rooftop equipment | 2000-12-04 → 2000-11-29 (-5d) | 2000-12-16 → 2000-12-12 (-4d) | 311d → none |  |
| 93 | **Window wall and store front closures** | 2000-11-03 → 2000-10-31 (-3d) | 2001-01-26 → 2001-01-22 (-4d) | 241d → none | resources 未割り当て → none |
| 94 | Install window wall aluminum and glass | 2000-11-03 → 2000-10-31 (-3d) | 2000-12-08 → 2000-12-04 (-4d) | 236d → none |  |
| 95 | Install interior stud walls and drywall | 2000-12-08 → 2000-12-05 (-3d) | 2001-01-12 → 2001-01-08 (-4d) | 236d → none |  |
| 96 | Install interior doors and hardware | 2001-01-12 → 2001-01-09 (-3d) | 2001-01-26 → 2001-01-22 (-4d) | 241d → none |  |
| 97 | Install store front doors and hardware | 2000-11-03 → 2000-10-31 (-3d) | 2000-11-24 → 2000-11-20 (-4d) | 271d → none |  |
| 98 | **Building Finishes** | 2000-12-08 → 2000-12-05 (-3d) | 2001-03-30 → 2001-03-26 (-4d) | 243d → none | resources 未割り当て → none |
| 99 | Install millwork and wood trim | 2001-01-12 → 2001-01-09 (-3d) | 2001-02-02 → 2001-01-29 (-4d) | 236d → none |  |
| 100 | Paint walls and woodwork | 2001-02-02 → 2001-01-30 (-3d) | 2001-03-02 → 2001-02-26 (-4d) | 236d → none |  |
| 101 | Install conduit at ceiling plenum space | 2000-12-08 → 2000-12-05 (-3d) | 2000-12-29 → 2000-12-25 (-4d) | 261d → none |  |
| 102 | Install duct in ceiling plenum space | 2001-01-12 → 2001-01-09 (-3d) | 2001-02-02 → 2001-01-29 (-4d) | 256d → none |  |
| 103 | Install ceiling grid | 2001-02-02 → 2001-01-30 (-3d) | 2001-02-16 → 2001-02-12 (-4d) | 256d → none |  |
| 104 | Install ceiling tile | 2001-02-16 → 2001-02-13 (-3d) | 2001-03-02 → 2001-02-26 (-4d) | 256d → none |  |
| 105 | Hang wallpaper | 2001-02-16 → 2001-02-13 (-3d) | 2001-03-02 → 2001-02-26 (-4d) | 256d → none |  |
| 106 | Install building carpet | 2001-03-02 → 2001-02-27 (-3d) | 2001-03-30 → 2001-03-26 (-4d) | 236d → none |  |
| 107 | Install hardware and accessories | 2001-03-02 → 2001-02-27 (-3d) | 2001-03-23 → 2001-03-19 (-4d) | 241d → none |  |
| 108 | Complete interior and exterior sod and plantings | 2001-03-02 → 2001-02-27 (-3d) | 2001-03-16 → 2001-03-12 (-4d) | 243d → none |  |
| 109 | Pave, curb, and stripe parking lot | 2001-03-16 → 2001-03-13 (-3d) | 2001-03-30 → 2001-03-26 (-4d) | 243d → none |  |
| 110 | **Elevators** | 2000-07-07 → 2000-07-04 (-3d) | 2000-09-01 → 2000-08-28 (-4d) | 390d → none | resources 未割り当て → none |
| 111 | Set elevator equipment in shafts | 2000-07-07 → 2000-07-04 (-3d) | 2000-08-04 → 2000-07-31 (-4d) | 390d → none |  |
| 112 | Set equipment in mechanical room | 2000-08-04 → 2000-08-01 (-3d) | 2000-08-18 → 2000-08-14 (-4d) | 390d → none |  |
| 113 | Test and align doors and equipment | 2000-08-18 → 2000-08-15 (-3d) | 2000-09-01 → 2000-08-28 (-4d) | 390d → none |  |
| 114 | **Plumbing** | 2000-11-10 → 2000-11-07 (-3d) | 2001-03-16 → 2001-03-12 (-4d) | 246d → none | resources 未割り当て → none |
| 115 | Rough-in plumbing in drywall walls | 2000-12-08 → 2000-12-05 (-3d) | 2001-01-05 → 2001-01-01 (-4d) | 271d → none |  |
| 116 | Tie-in fire line riser and set valves | 2000-11-10 → 2000-11-07 (-3d) | 2000-11-24 → 2000-11-20 (-4d) | 316d → none |  |
| 117 | Set plumbing fixtures and trim | 2001-01-05 → 2001-01-02 (-3d) | 2001-01-26 → 2001-01-22 (-4d) | 271d → none |  |
| 118 | Flush, test, and clean piping and fixtures | 2001-03-02 → 2001-02-27 (-3d) | 2001-03-16 → 2001-03-12 (-4d) | 246d → none |  |
| 119 | **Electrical** | 2000-08-21 → 2000-08-16 (-5d) | 2001-03-02 → 2001-02-26 (-4d) | 259d → none | resources 未割り当て → none |
| 120 | Rough-in electrical in masonry walls | 2000-08-21 → 2000-08-16 (-5d) | 2000-09-16 → 2000-09-12 (-4d) | 335d → none |  |
| 121 | Rough-in electrical in drywall walls | 2000-12-08 → 2000-12-05 (-3d) | 2001-01-05 → 2001-01-01 (-4d) | 271d → none |  |
| 122 | Pull wire in conduit and set area transformers | 2000-12-29 → 2000-12-26 (-3d) | 2001-01-19 → 2001-01-15 (-4d) | 261d → none |  |
| 123 | Install and terminate electrical devices | 2001-01-19 → 2001-01-16 (-3d) | 2001-02-09 → 2001-02-05 (-4d) | 261d → none |  |
| 124 | Make electrical terminations for HVAC equipment | 2001-01-19 → 2001-01-16 (-3d) | 2001-01-23 → 2001-01-17 (-6d) | 287d → none |  |
| 125 | Install light fixtures - test and clean | 2001-02-16 → 2001-02-13 (-3d) | 2001-03-02 → 2001-02-26 (-4d) | 256d → none |  |
| 126 | **Heating and Ventilating - AC** | 2000-07-07 → 2000-07-04 (-3d) | 2001-03-16 → 2001-03-12 (-4d) | 269d → none | resources 未割り当て → none |
| 127 | Set equipment in mechanical room | 2000-07-07 → 2000-07-04 (-3d) | 2000-07-21 → 2000-07-17 (-4d) | 404d → none |  |
| 128 | Rough-in mechanical in masonry walls | 2000-08-21 → 2000-08-16 (-5d) | 2000-09-16 → 2000-09-12 (-4d) | 363d → none |  |
| 129 | Rough-in mechanical in drywall walls | 2000-12-08 → 2000-12-05 (-3d) | 2000-12-22 → 2000-12-18 (-4d) | 329d → none |  |
| 130 | Install duct in building chase | 2000-12-08 → 2000-12-05 (-3d) | 2000-12-29 → 2000-12-25 (-4d) | 304d → none |  |
| 131 | Set HVAC trim and test and balance system | 2001-02-16 → 2001-02-13 (-3d) | 2001-03-16 → 2001-03-12 (-4d) | 269d → none |  |
| 132 | **Final Clean-up and Occupancy** | 2001-01-12 → 2001-01-09 (-3d) | 2001-04-06 → 2001-04-02 (-4d) | 254d → none | resources 未割り当て → none |
| 133 | Install hard tile flooring in common areas | 2001-01-12 → 2001-01-09 (-3d) | 2001-01-19 → 2001-01-15 (-4d) | 282d → none |  |
| 134 | Clean hard tile floors | 2001-01-19 → 2001-01-16 (-3d) | 2001-01-25 → 2001-01-19 (-6d) | 282d → none |  |
| 135 | Remove debris from building and do final clean-up | 2001-03-30 → 2001-03-27 (-3d) | 2001-04-05 → 2001-03-30 (-6d) | 236d → none |  |
| 136 | Substantial completion date | 2001-04-05 → 2001-04-02 (-3d) | 2001-04-06 → 2001-04-02 (-4d) | 254d → none |  |
| 137 | **Complete Final Inspections** | 2001-04-05 → 2001-04-02 (-3d) | 2001-04-13 → 2001-04-09 (-4d) | 236d → none | resources 未割り当て → none |
| 138 | Complete elevator inspection and certification | 2001-04-05 → 2001-04-02 (-3d) | 2001-04-10 → 2001-04-04 (-6d) | 236d → none |  |
| 139 | Perform architect's inspection | 2001-04-10 → 2001-04-05 (-5d) | 2001-04-11 → 2001-04-05 (-6d) | 236d → none |  |
| 140 | Perform local building agency inspection | 2001-04-11 → 2001-04-06 (-5d) | 2001-04-12 → 2001-04-06 (-6d) | 236d → none |  |

| ID | Task | Start | Finish | Total float |
| --- | --- | --- | --- | --- |
| 141 | Perform Fire Marshal's inspection | 2001-04-12 → 2001-04-09 (-3d) | 2001-04-13 → 2001-04-09 (-4d) | 236d → none |
| 142 | Complete punch list items from all inspections | 2001-04-13 → 2001-04-10 (-3d) | 2001-04-27 → 2001-04-23 (-4d) | 236d → none |
| 143 | Obtain certificate of occupancy | 2001-04-27 → 2001-04-24 (-3d) | 2001-05-01 → 2001-04-25 (-6d) | 236d → none |
| 144 | Issue final completion documents including warranties | 2001-04-27 → 2001-04-24 (-3d) | 2001-04-28 → 2001-04-24 (-4d) | 237d → none |
| 145 | Issue final request for payment | 2001-05-01 → 2001-04-26 (-5d) | 2001-05-02 → 2001-04-26 (-6d) | 236d → none |

## Version 3 (saved 2026-08-08, file Commercial construction project plan2.pod)

Note of the change: Finalize UI and release updates

Last finish 2001-04-26 → 2001-05-02 (+6d). Complete tasks 0 → 1.

Added:

| ID | Task | Duration | Start | Finish | Predecessors |
| --- | --- | --- | --- | --- | --- |
| 5 | **Receive notice to proceed and sign contract** | 3d | 2000-01-06 | 2000-01-11 |  |
| 40 | 猫 | 4d | 2000-04-03 | 2000-04-07 | 37 |
| 41 | 狐と牛 | 5d | 2000-04-07 | 2000-04-14 | 40 |

Removed: 3 Receive notice to proceed and sign contract; 37 Form elevator pit walls; 38 Set reinforcing and anchor bolts

Changed:

| ID | Task | Start | Finish | Duration | Complete | Total float | Predecessors | Other |
| --- | --- | --- | --- | --- | --- | --- | --- | --- |
| 2 | General Conditions | 2000-01-03 → 2000-01-06 (+3d) | 2000-01-25 → 2000-01-29 (+4d) |  | 0% → 8% | none → 327d |  |  |
| 4 | **Three-story Office Building (76,000 square feet)** | 2000-01-03 → 2000-01-06 (+3d) | 2001-04-26 → 2001-05-02 (+6d) |  | 0% → 1% |  |  |  |
| 6 | Submit bond and insurance documents |  | 2000-01-07 → 2000-01-08 (+1d) |  |  | none → 338d | Receive notice to proceed and sign contract → none | resources G.C. Project Management; G.C. General Management [25%] → G.C. Project Management |
| 7 | Prepare and submit project schedule |  | 2000-01-11 → 2000-01-12 (+1d) |  |  | none → 338d |  | resources G.C. Project Management [25%]; G.C. Scheduler → G.C. Project Management [25%] |
| 8 | Prepare and submit schedule of values |  | 2000-01-13 → 2000-01-14 (+1d) |  |  | none → 338d |  | resources G.C. General Management [10%]; G.C. Project Management → G.C. Project Management |
| 9 | Obtain building permits | 2000-01-06 → 2000-01-11 (+5d) | 2000-01-11 → 2000-01-15 (+4d) |  |  | none → 99d | Receive notice to proceed and sign contract → 5 | resources G.C. Project Management [50%]; G.C. Procurement [50%] → G.C. Project Management [50%] |
| 10 | Submit preliminary shop drawings | 2000-01-12 → 2000-01-17 (+5d) | 2000-01-25 → 2000-01-29 (+4d) |  |  | none → 99d |  | resources G.C. Project Management [50%]; G.C. Procurement [50%] → G.C. Project Management [50%] |
| 11 | Submit monthly requests for payment |  | 2000-01-06 → 2000-01-07 (+1d) |  | 0% → 30% | none → 10d | Receive notice to proceed and sign contract → 5 |  |
| 12 | **Long Lead Procurement** |  | 2000-04-13 → 2000-04-14 (+1d) |  | 0% → 6% | none → 224d |  |  |
| 13 | Submit shop drawings and order long lead items - steel |  | 2000-01-20 → 2000-01-21 (+1d) |  |  | none → 10d |  | resources Steel Erection Contractor Management → none |
| 14 | Submit shop drawings and order long lead items - roofing | 2000-01-26 → 2000-01-31 (+5d) | 2000-02-08 → 2000-02-12 (+4d) |  |  | none → 268d |  | resources Roofing Contractor Management → none |
| 15 | Submit shop drawings and order long lead items - elevator |  | 2000-02-08 → 2000-02-09 (+1d) |  | 0% → 100% | none → 261d |  | resources Elevator Contractor Management → none |
| 16 | Submit shop drawings and order long lead items - plumbing | 2000-01-26 → 2000-01-31 (+5d) | 2000-02-08 → 2000-02-12 (+4d) |  |  | none → 99d |  | resources Plumbing Contractor Management → none |
| 17 | Submit shop drawings and order long lead items - electric | 2000-01-26 → 2000-01-31 (+5d) | 2000-02-08 → 2000-02-12 (+4d) |  |  | none → 99d |  | resources Electric Contractor Management → none |
| 18 | Submit shop drawings and order long lead items - HVAC | 2000-01-26 → 2000-01-31 (+5d) | 2000-02-08 → 2000-02-12 (+4d) |  |  | none → 99d |  | resources HVAC Contractor Management → none |
| 19 | Detail, fabricate and deliver steel |  | 2000-04-13 → 2000-04-14 (+1d) |  |  | none → 10d |  | resources Steel Erection Contractor Management [50%]; Steel Erection Contractor [50%] → Steel Erection Contractor [50%] |
| 20 | **Mobilize on Site** | 2000-01-06 → 2000-01-11 (+5d) | 2000-01-19 → 2000-01-25 (+6d) |  |  |  |  |  |
| 21 | Set up site office | 2000-01-10 → 2000-01-13 (+3d) | 2000-01-12 → 2000-01-18 (+6d) |  |  |  |  | resources G.C. Superintendent; G.C. Labor Crew [10%] → none |
| 22 | Install temporary power | 2000-01-06 → 2000-01-11 (+5d) | 2000-01-07 → 2000-01-13 (+6d) |  |  |  | Receive notice to proceed and sign contract → 5 | resources Electric Contractor → none |
| 23 | Install temporary water service | 2000-01-06 → 2000-01-11 (+5d) | 2000-01-07 → 2000-01-13 (+6d) |  |  |  | Receive notice to proceed and sign contract → 5 | resources Plumbing Contractor → none |
| 24 | Set line and grade benchmarks | 2000-01-13 → 2000-01-18 (+5d) | 2000-01-17 → 2000-01-21 (+4d) |  |  |  |  | resources G.C. Survey Crew → none |
| 25 | Prepare site - lay down yard and temporary fencing | 2000-01-18 → 2000-01-21 (+3d) | 2000-01-19 → 2000-01-25 (+6d) |  |  |  |  | resources Site Grading Contractor; G.C. Labor Crew [10%] → none |
| 26 | **Site Grading and Utilities** | 2000-01-20 → 2000-01-25 (+5d) | 2000-03-08 → 2000-03-14 (+6d) |  |  |  |  |  |
| 27 | Clear and grub site | 2000-01-20 → 2000-01-25 (+5d) | 2000-01-24 → 2000-01-28 (+4d) |  |  |  |  | resources Site Grading Contractor → none |
| 28 | Stone site access and temporary parking area | 2000-01-25 → 2000-01-28 (+3d) | 2000-01-26 → 2000-02-01 (+6d) |  |  |  |  | resources Site Grading Contractor → none |
| 29 | Rough grade site (cut and fill) | 2000-01-27 → 2000-02-01 (+5d) | 2000-02-02 → 2000-02-08 (+6d) |  |  |  |  | resources Site Grading Contractor → none |
| 30 | Install storm drainage | 2000-02-03 → 2000-02-08 (+5d) | 2000-02-16 → 2000-02-22 (+6d) |  |  | none → 9d |  | resources Site Grading Contractor → none |
| 31 | Install exterior fire line and building fire riser | 2000-02-03 → 2000-02-08 (+5d) | 2000-02-16 → 2000-02-22 (+6d) |  |  |  |  | resources Plumbing Contractor → none |
| 32 | Perform final site grading | 2000-02-17 → 2000-02-22 (+5d) | 2000-03-01 → 2000-03-07 (+6d) |  |  |  |  | resources Site Grading Contractor → none |
| 33 | Erect building batter boards and layout building | 2000-03-02 → 2000-03-07 (+5d) | 2000-03-08 → 2000-03-14 (+6d) |  |  |  |  | resources G.C. Survey Crew → none |
| 34 | **Foundations** | 2000-03-09 → 2000-03-14 (+5d) | 2000-04-24 → 2000-04-28 (+4d) |  |  | none → 204d |  |  |
| 35 | Excavate foundations | 2000-03-09 → 2000-03-14 (+5d) | 2000-03-22 → 2000-03-28 (+6d) |  |  |  |  | resources Site Grading Contractor [50%] → none |
| 36 | Excavate elevator pit | 2000-03-09 → 2000-03-14 (+5d) | 2000-03-10 → 2000-03-16 (+6d) |  |  | none → 214d |  | resources Site Grading Contractor → none |
| 37 | Form column piers and spread foundations | 2000-03-23 → 2000-03-28 (+5d) | 2000-03-28 → 2000-04-01 (+4d) |  |  |  |  | resources G.C. Rough Carpenter Crew → none |
| 38 | Rough-in electric and plumbing in elevator | 2000-03-13 → 2000-03-16 (+3d) | 2000-03-16 → 2000-03-22 (+6d) |  |  | none → 214d |  | resources Plumbing Contractor; Electric Contractor → none |
| 39 | テスト | 2000-04-04 → 2000-03-22 (-13d) | 2000-04-10 → 2000-03-28 (-13d) | 5d → 4d |  | none → 214d | Set reinforcing and anchor bolts → 38 | was named Pour column piers and foundations; resources G.C. Concrete Crew → none |
| 42 | Pour concrete elevator walls | 2000-03-23 → 2000-03-28 (+5d) | 2000-03-23 → 2000-03-29 (+6d) |  |  | none → 214d | Form elevator pit walls → 39 | resources G.C. Concrete Crew → none |
| 43 | Cure elevator wall concrete | 2000-03-24 → 2000-03-29 (+5d) | 2000-04-03 → 2000-04-07 (+4d) |  |  | none → 214d |  | resources G.C. Labor Crew [10%] → none |
| 44 | Cure piers and foundations | 2000-04-11 → 2000-04-14 (+3d) | 2000-04-19 → 2000-04-25 (+6d) |  |  |  | 39 → 41 | resources G.C. Labor Crew [10%] → none |
| 45 | Strip wall forms | 2000-04-04 → 2000-04-07 (+3d) | 2000-04-04 → 2000-04-08 (+4d) |  |  | none → 214d |  | resources G.C. Labor Crew [10%] → none |
| 46 | Strip column piers and foundation forms | 2000-04-20 → 2000-04-25 (+5d) | 2000-04-24 → 2000-04-28 (+4d) |  |  |  |  | resources G.C. Labor Crew → none |
| 47 | Install pneumatic tube in elevator pit | 2000-04-05 → 2000-04-10 (+5d) | 2000-04-07 → 2000-04-13 (+6d) |  |  | none → 214d |  | resources Elevator Contractor → none |
| 48 | Prepare and pour concrete floor in elevator pit | 2000-04-10 → 2000-04-13 (+3d) | 2000-04-10 → 2000-04-14 (+4d) |  |  | none → 214d |  | resources G.C. Concrete Crew → none |
| 49 | **Steel Erection** | 2000-04-25 → 2000-04-28 (+3d) | 2000-06-26 → 2000-06-30 (+4d) |  |  | none → 139d |  |  |
| 50 | Erect steel columns, beams and joist - 1st and 2nd floors | 2000-04-25 → 2000-04-28 (+3d) | 2000-05-08 → 2000-05-12 (+4d) |  |  |  |  |  |
| 51 | Erect steel columns, beams and joist - 3rd floor and roof | 2000-05-09 → 2000-05-12 (+3d) | 2000-05-22 → 2000-05-26 (+4d) |  |  |  |  |  |
| 52 | Install miscellaneous iron and bracing - 1st and 2nd floors | 2000-05-09 → 2000-05-12 (+3d) | 2000-05-22 → 2000-05-26 (+4d) |  |  | none → 164d |  |  |
| 53 | Install miscellaneous iron and bracing - 3rd floor and roof | 2000-05-23 → 2000-05-26 (+3d) | 2000-06-05 → 2000-06-09 (+4d) |  |  |  |  |  |
| 54 | Install stairs and miscellaneous iron railing | 2000-06-06 → 2000-06-09 (+3d) | 2000-06-19 → 2000-06-23 (+4d) |  |  |  |  |  |
| 55 | Touch-up paint on steel | 2000-06-20 → 2000-06-23 (+3d) | 2000-06-26 → 2000-06-30 (+4d) |  |  |  |  |  |
| 56 | **Form and Pour Concrete - Floors and Roof** | 2000-05-09 → 2000-05-12 (+3d) | 2000-09-04 → 2000-09-08 (+4d) |  |  | none → 85d |  |  |
| 57 | Form 2nd floor including all floor openings | 2000-06-27 → 2000-06-30 (+3d) | 2000-07-03 → 2000-07-07 (+4d) |  |  |  |  | resources G.C. Rough Carpenter Crew; G.C. Labor Crew [20%] → none |
| 58 | Install rebar and in-floor utilities (including mechanical, electrical, plumbing) | 2000-05-09 → 2000-05-12 (+3d) | 2000-05-15 → 2000-05-19 (+4d) |  |  | none → 35d |  | resources G.C. Labor Crew [33%]; Plumbing Contractor [33%]; Electric Contractor [33%] → none |
| 59 | Pour 2nd floor slab | 2000-07-04 → 2000-07-07 (+3d) | 2000-07-07 → 2000-07-13 (+6d) |  |  |  |  | resources G.C. Concrete Crew → none |
| 60 | Cure 2nd floor slab | 2000-07-10 → 2000-07-13 (+3d) | 2000-07-18 → 2000-07-22 (+4d) |  |  |  |  | resources G.C. Labor Crew [10%] → none |
| 61 | Strip forms from 2nd floor slab | 2000-07-19 → 2000-07-24 (+5d) | 2000-07-20 → 2000-07-26 (+6d) |  |  | none → 99d |  | resources G.C. Labor Crew → none |
| 62 | Form 3rd floor including all floor openings | 2000-07-19 → 2000-07-24 (+5d) | 2000-07-25 → 2000-07-29 (+4d) |  |  |  |  | resources G.C. Rough Carpenter Crew [50%]; G.C. Labor Crew [20%] → none |
| 63 | Install rebar and in-floor utilities (including mechanical, electrical, plumbing) | 2000-07-19 → 2000-07-24 (+5d) | 2000-07-25 → 2000-07-29 (+4d) |  |  |  |  | resources G.C. Labor Crew [33%]; Plumbing Contractor [33%]; Electric Contractor [33%] → none |
| 64 | Pour 3rd floor slab | 2000-07-26 → 2000-07-31 (+5d) | 2000-07-31 → 2000-08-04 (+4d) |  |  |  |  | resources G.C. Concrete Crew → none |
| 65 | Cure 3rd floor slab | 2000-08-01 → 2000-08-04 (+3d) | 2000-08-09 → 2000-08-15 (+6d) |  |  |  |  | resources G.C. Labor Crew [10%] → none |
| 66 | Strip forms from 3rd floor slab | 2000-08-10 → 2000-08-15 (+5d) | 2000-08-11 → 2000-08-17 (+6d) |  |  | none → 16d |  | resources G.C. Labor Crew → none |
| 67 | Form roof slab including all floor openings | 2000-08-10 → 2000-08-15 (+5d) | 2000-08-16 → 2000-08-22 (+6d) |  |  |  |  | resources G.C. Rough Carpenter Crew; G.C. Labor Crew [20%] → none |
| 68 | Install rebar and in-floor utilities (including mechanical, electrical, plumbing) | 2000-08-10 → 2000-08-15 (+5d) | 2000-08-16 → 2000-08-22 (+6d) |  |  |  |  | resources G.C. Labor Crew [33%]; Plumbing Contractor [33%]; Electric Contractor [33%] → none |
| 69 | Pour roof slab | 2000-08-17 → 2000-08-22 (+5d) | 2000-08-22 → 2000-08-26 (+4d) |  |  |  |  | resources G.C. Concrete Crew → none |
| 70 | Cure roof slab | 2000-08-23 → 2000-08-28 (+5d) | 2000-08-31 → 2000-09-06 (+6d) |  |  |  |  | resources G.C. Labor Crew [10%] → none |
| 71 | Strip forms from roof slab | 2000-09-01 → 2000-09-06 (+5d) | 2000-09-04 → 2000-09-08 (+4d) |  |  |  |  | resources G.C. Labor Crew → none |
| 72 | Form 1st floor | 2000-07-21 → 2000-07-26 (+5d) | 2000-07-26 → 2000-08-01 (+6d) |  |  | none → 100d |  | resources G.C. Rough Carpenter Crew → none |
| 73 | Install electrical underground | 2000-07-21 → 2000-07-26 (+5d) | 2000-07-27 → 2000-08-02 (+6d) |  |  | none → 99d |  | resources Electric Contractor → none |
| 74 | Install plumbing underground | 2000-07-21 → 2000-07-26 (+5d) | 2000-07-27 → 2000-08-02 (+6d) |  |  | none → 99d |  | resources Plumbing Contractor → none |
| 75 | Install rebar and in-floor utilities | 2000-07-21 → 2000-07-26 (+5d) | 2000-07-26 → 2000-08-01 (+6d) |  |  | none → 100d |  | resources G.C. Labor Crew [33%]; Plumbing Contractor [33%]; Electric Contractor [33%] → none |

| ID | Task | Start | Finish | Total float | Other |
| --- | --- | --- | --- | --- | --- |
| 76 | Pour 1st floor slab | 2000-07-28 → 2000-08-02 (+5d) | 2000-08-02 → 2000-08-08 (+6d) | none → 99d | resources G.C. Concrete Crew → none |
| 77 | Cure 1st floor slab | 2000-08-03 → 2000-08-08 (+5d) | 2000-08-11 → 2000-08-17 (+6d) | none → 99d | resources G.C. Labor Crew [10%] → none |
| 78 | Strip forms from 1st floor slab | 2000-08-14 → 2000-08-17 (+3d) | 2000-08-15 → 2000-08-19 (+4d) | none → 99d | resources G.C. Labor Crew → none |
| 79 | **Carpentry Work** | 2000-09-05 → 2000-09-08 (+3d) | 2000-09-25 → 2000-09-29 (+4d) |  |  |
| 80 | Install exterior sheathing and metal studs | 2000-09-05 → 2000-09-08 (+3d) | 2000-09-25 → 2000-09-29 (+4d) |  | resources Drywall Contractor → none |
| 81 | **Masonry Work** | 2000-06-06 → 2000-06-09 (+3d) | 2000-11-06 → 2000-11-10 (+4d) | none → 80d |  |
| 82 | Rough-in plumbing at toilets and masonry walls | 2000-08-16 → 2000-08-21 (+5d) | 2000-09-12 → 2000-09-16 (+4d) | none → 99d | resources Plumbing Contractor → none |
| 83 | Lay masonry at core, mechanical, and toilets | 2000-06-06 → 2000-06-09 (+3d) | 2000-07-03 → 2000-07-07 (+4d) | none → 154d | resources Masonry Contractor → none |
| 84 | Install exterior masonry work | 2000-09-26 → 2000-09-29 (+3d) | 2000-10-30 → 2000-11-03 (+4d) |  | resources Masonry Contractor → none |
| 85 | Install roof drains | 2000-10-31 → 2000-11-03 (+3d) | 2000-11-01 → 2000-11-07 (+6d) | none → 77d | resources Roofing Contractor → none |
| 86 | Install tile in toilet rooms | 2000-09-13 → 2000-09-18 (+5d) | 2000-09-26 → 2000-09-30 (+4d) | none → 99d | resources Tile Contractor → none |
| 87 | Clean masonry | 2000-10-31 → 2000-11-03 (+3d) | 2000-11-06 → 2000-11-10 (+4d) | none → 80d | resources Masonry Contractor [50%] → none |
| 88 | Clean toilet room tile | 2000-09-27 → 2000-10-02 (+5d) | 2000-10-03 → 2000-10-07 (+4d) | none → 99d | resources Tile Contractor [50%] → none |
| 89 | **Roofing** | 2000-10-31 → 2000-11-03 (+3d) | 2000-12-12 → 2000-12-16 (+4d) | none → 75d |  |
| 90 | Install flashing at parapet walls | 2000-10-31 → 2000-11-03 (+3d) | 2000-11-03 → 2000-11-09 (+6d) | none → 75d | resources Roofing Contractor → none |
| 91 | Pour lightweight concrete roof fill | 2000-11-06 → 2000-11-09 (+3d) | 2000-11-07 → 2000-11-11 (+4d) | none → 75d | resources Roofing Contractor → none |
| 92 | Install seamless roofing material | 2000-11-15 → 2000-11-18 (+3d) | 2000-11-21 → 2000-11-25 (+4d) | none → 75d | resources Roofing Contractor → none |
| 93 | Spread stone ballast on seamless roof | 2000-11-22 → 2000-11-27 (+5d) | 2000-11-28 → 2000-12-02 (+4d) | none → 75d | resources Roofing Contractor → none |
| 94 | Set rooftop equipment | 2000-11-29 → 2000-12-04 (+5d) | 2000-12-12 → 2000-12-16 (+4d) | none → 75d | resources HVAC Contractor → none |
| 95 | **Window wall and store front closures** | 2000-10-31 → 2000-11-03 (+3d) | 2001-01-22 → 2001-01-26 (+4d) | none → 5d |  |
| 96 | Install window wall aluminum and glass | 2000-10-31 → 2000-11-03 (+3d) | 2000-12-04 → 2000-12-08 (+4d) |  | resources Window Contractor → none |
| 97 | Install interior stud walls and drywall | 2000-12-05 → 2000-12-08 (+3d) | 2001-01-08 → 2001-01-12 (+4d) |  | resources Drywall Contractor → none |
| 98 | Install interior doors and hardware | 2001-01-09 → 2001-01-12 (+3d) | 2001-01-22 → 2001-01-26 (+4d) | none → 5d | resources G.C. Finish Carpenter Crew → none |
| 99 | Install store front doors and hardware | 2000-10-31 → 2000-11-03 (+3d) | 2000-11-20 → 2000-11-24 (+4d) | none → 35d | resources Window Contractor → none |
| 100 | **Building Finishes** | 2000-12-05 → 2000-12-08 (+3d) | 2001-03-26 → 2001-03-30 (+4d) | none → 7d |  |
| 101 | Install millwork and wood trim | 2001-01-09 → 2001-01-12 (+3d) | 2001-01-29 → 2001-02-02 (+4d) |  | resources G.C. Finish Carpenter Crew → none |
| 102 | Paint walls and woodwork | 2001-01-30 → 2001-02-02 (+3d) | 2001-02-26 → 2001-03-02 (+4d) |  |  |
| 103 | Install conduit at ceiling plenum space | 2000-12-05 → 2000-12-08 (+3d) | 2000-12-25 → 2000-12-29 (+4d) | none → 25d | resources Electric Contractor → none |
| 104 | Install duct in ceiling plenum space | 2001-01-09 → 2001-01-12 (+3d) | 2001-01-29 → 2001-02-02 (+4d) | none → 20d | resources HVAC Contractor → none |
| 105 | Install ceiling grid | 2001-01-30 → 2001-02-02 (+3d) | 2001-02-12 → 2001-02-16 (+4d) | none → 20d | resources Drywall Contractor → none |
| 106 | Install ceiling tile | 2001-02-13 → 2001-02-16 (+3d) | 2001-02-26 → 2001-03-02 (+4d) | none → 20d | resources Drywall Contractor → none |
| 107 | Hang wallpaper | 2001-02-13 → 2001-02-16 (+3d) | 2001-02-26 → 2001-03-02 (+4d) | none → 20d |  |
| 108 | Install building carpet | 2001-02-27 → 2001-03-02 (+3d) | 2001-03-26 → 2001-03-30 (+4d) |  | resources Carpet Contractor → none |
| 109 | Install hardware and accessories | 2001-02-27 → 2001-03-02 (+3d) | 2001-03-19 → 2001-03-23 (+4d) | none → 5d | resources G.C. Finish Carpenter Crew → none |
| 110 | Complete interior and exterior sod and plantings | 2001-02-27 → 2001-03-02 (+3d) | 2001-03-12 → 2001-03-16 (+4d) | none → 7d | resources Landscape Contractor → none |
| 111 | Pave, curb, and stripe parking lot | 2001-03-13 → 2001-03-16 (+3d) | 2001-03-26 → 2001-03-30 (+4d) | none → 7d | resources Paving Contractor → none |
| 112 | **Elevators** | 2000-07-04 → 2000-07-07 (+3d) | 2000-08-28 → 2000-09-01 (+4d) | none → 154d |  |
| 113 | Set elevator equipment in shafts | 2000-07-04 → 2000-07-07 (+3d) | 2000-07-31 → 2000-08-04 (+4d) | none → 154d | resources Elevator Contractor → none |
| 114 | Set equipment in mechanical room | 2000-08-01 → 2000-08-04 (+3d) | 2000-08-14 → 2000-08-18 (+4d) | none → 154d | resources Elevator Contractor → none |
| 115 | Test and align doors and equipment | 2000-08-15 → 2000-08-18 (+3d) | 2000-08-28 → 2000-09-01 (+4d) | none → 154d | resources Elevator Contractor → none |
| 116 | **Plumbing** | 2000-11-07 → 2000-11-10 (+3d) | 2001-03-12 → 2001-03-16 (+4d) | none → 10d |  |
| 117 | Rough-in plumbing in drywall walls | 2000-12-05 → 2000-12-08 (+3d) | 2001-01-01 → 2001-01-05 (+4d) | none → 35d | resources Plumbing Contractor → none |
| 118 | Tie-in fire line riser and set valves | 2000-11-07 → 2000-11-10 (+3d) | 2000-11-20 → 2000-11-24 (+4d) | none → 80d | resources Plumbing Contractor → none |
| 119 | Set plumbing fixtures and trim | 2001-01-02 → 2001-01-05 (+3d) | 2001-01-22 → 2001-01-26 (+4d) | none → 35d | resources Plumbing Contractor → none |
| 120 | Flush, test, and clean piping and fixtures | 2001-02-27 → 2001-03-02 (+3d) | 2001-03-12 → 2001-03-16 (+4d) | none → 10d | resources Plumbing Contractor → none |
| 121 | **Electrical** | 2000-08-16 → 2000-08-21 (+5d) | 2001-02-26 → 2001-03-02 (+4d) | none → 23d |  |
| 122 | Rough-in electrical in masonry walls | 2000-08-16 → 2000-08-21 (+5d) | 2000-09-12 → 2000-09-16 (+4d) | none → 99d | resources Electric Contractor → none |
| 123 | Rough-in electrical in drywall walls | 2000-12-05 → 2000-12-08 (+3d) | 2001-01-01 → 2001-01-05 (+4d) | none → 35d | resources Electric Contractor → none |
| 124 | Pull wire in conduit and set area transformers | 2000-12-26 → 2000-12-29 (+3d) | 2001-01-15 → 2001-01-19 (+4d) | none → 25d | resources Electric Contractor → none |
| 125 | Install and terminate electrical devices | 2001-01-16 → 2001-01-19 (+3d) | 2001-02-05 → 2001-02-09 (+4d) | none → 25d | resources Electric Contractor → none |
| 126 | Make electrical terminations for HVAC equipment | 2001-01-16 → 2001-01-19 (+3d) | 2001-01-17 → 2001-01-23 (+6d) | none → 51d | resources Electric Contractor → none |
| 127 | Install light fixtures - test and clean | 2001-02-13 → 2001-02-16 (+3d) | 2001-02-26 → 2001-03-02 (+4d) | none → 20d | resources Electric Contractor → none |
| 128 | **Heating and Ventilating - AC** | 2000-07-04 → 2000-07-07 (+3d) | 2001-03-12 → 2001-03-16 (+4d) | none → 33d |  |
| 129 | Set equipment in mechanical room | 2000-07-04 → 2000-07-07 (+3d) | 2000-07-17 → 2000-07-21 (+4d) | none → 168d | resources HVAC Contractor → none |
| 130 | Rough-in mechanical in masonry walls | 2000-08-16 → 2000-08-21 (+5d) | 2000-09-12 → 2000-09-16 (+4d) | none → 127d | resources HVAC Contractor → none |
| 131 | Rough-in mechanical in drywall walls | 2000-12-05 → 2000-12-08 (+3d) | 2000-12-18 → 2000-12-22 (+4d) | none → 93d | resources HVAC Contractor → none |
| 132 | Install duct in building chase | 2000-12-05 → 2000-12-08 (+3d) | 2000-12-25 → 2000-12-29 (+4d) | none → 68d | resources HVAC Contractor → none |
| 133 | Set HVAC trim and test and balance system | 2001-02-13 → 2001-02-16 (+3d) | 2001-03-12 → 2001-03-16 (+4d) | none → 33d | resources HVAC Contractor → none |
| 134 | **Final Clean-up and Occupancy** | 2001-01-09 → 2001-01-12 (+3d) | 2001-04-02 → 2001-04-06 (+4d) | none → 18d |  |
| 135 | Install hard tile flooring in common areas | 2001-01-09 → 2001-01-12 (+3d) | 2001-01-15 → 2001-01-19 (+4d) | none → 46d | resources Tile Contractor → none |
| 136 | Clean hard tile floors | 2001-01-16 → 2001-01-19 (+3d) | 2001-01-19 → 2001-01-25 (+6d) | none → 46d | resources Tile Contractor [50%] → none |
| 137 | Remove debris from building and do final clean-up | 2001-03-27 → 2001-03-30 (+3d) | 2001-03-30 → 2001-04-05 (+6d) |  | resources G.C. Labor Crew → none |
| 138 | Substantial completion date | 2001-04-02 → 2001-04-05 (+3d) | 2001-04-02 → 2001-04-06 (+4d) | none → 18d | resources G.C. Superintendent → none |
| 139 | **Complete Final Inspections** | 2001-04-02 → 2001-04-05 (+3d) | 2001-04-09 → 2001-04-13 (+4d) |  |  |
| 140 | Complete elevator inspection and certification | 2001-04-02 → 2001-04-05 (+3d) | 2001-04-04 → 2001-04-10 (+6d) |  | resources Elevator Contractor → none |
| 141 | Perform architect's inspection | 2001-04-05 → 2001-04-10 (+5d) | 2001-04-05 → 2001-04-11 (+6d) |  | resources G.C. Superintendent [50%]; G.C. Project Management [50%] → G.C. Project Management [50%] |
| 142 | Perform local building agency inspection | 2001-04-06 → 2001-04-11 (+5d) | 2001-04-06 → 2001-04-12 (+6d) |  | resources G.C. Project Management [50%]; G.C. Superintendent [50%] → G.C. Project Management [50%] |
| 143 | Perform Fire Marshal's inspection | 2001-04-09 → 2001-04-12 (+3d) | 2001-04-09 → 2001-04-13 (+4d) |  | resources G.C. Superintendent [50%]; G.C. Project Management [50%] → G.C. Project Management [50%] |
| 144 | Complete punch list items from all inspections | 2001-04-10 → 2001-04-13 (+3d) | 2001-04-23 → 2001-04-27 (+4d) |  | resources G.C. Superintendent [11%]; G.C. Labor Crew [11%]; Plumbing Contractor [11%]; Electric Contractor [11%]; HVAC Contractor [11%]; Drywall Contractor [11%]; Carpet Contractor [11%]; Paving Contractor [11%]; Painting Contractor [11%] → Painting Contractor [11%] |
| 145 | Obtain certificate of occupancy | 2001-04-24 → 2001-04-27 (+3d) | 2001-04-25 → 2001-05-01 (+6d) |  |  |

| ID | Task | Start | Finish | Total float | Other |
| --- | --- | --- | --- | --- | --- |
| 146 | Issue final completion documents including warranties | 2001-04-24 → 2001-04-27 (+3d) | 2001-04-24 → 2001-04-28 (+4d) | none → 1d |  |
| 147 | Issue final request for payment | 2001-04-26 → 2001-05-01 (+5d) | 2001-04-26 → 2001-05-02 (+6d) |  | resources G.C. Project Management [33%]; G.C. Accounting [33%]; G.C. General Management [33%] → G.C. Project Management [33%] |
